# translational_duke

Schedule from MS Project, 2006-05-01 to 2006-11-01.
Duke University

## Calendars

- Standard: Mon-Fri 08:00-12:00, 13:00-17:00; Sat-Sun off.

## Resources

| Resource |
| --- |
| Patrick |
| Jeff |
| SB |
| Raj |
| Bob |
| Ram |
| Jamie |
| Everyone |
| Wilma? |
| Wilma |
| Bioinformatics |
| Mark |
| Patirck |
| Chris |
| Mark.Chris |
| domain expert |

## Schedule

| ID | WBS | Task | Duration | Start | Finish | Predecessors | Total slack | Free slack | Constraint | Resources | Work |
| --- | --- | --- | --- | --- | --- | --- | --- | --- | --- | --- | --- |
| 1 | 1 | **Phase I** | 133d | 2006-05-01 | 2006-11-01 |  | 0d |  |  |  | 18308h |
| 2 | 1.1 | **Inception** | 25d | 2006-05-01 | 2006-06-02 |  | 11d | 0d |  |  | 4344h |
| 3 | 1.1.1 | Install MS Project Server | 25d | 2006-05-01 | 2006-06-02 |  | 11d |  |  | Jeff | 200h |
| 4 | 1.1.2 | Draft project management plan | 25d | 2006-05-01 | 2006-06-02 |  | 11d |  |  | Patrick; Bob; Ram | 600h |
| 5 | 1.1.3 | Draft communications plan | 25d | 2006-05-01 | 2006-06-02 |  | 11d |  |  | Patrick; Bob; Ram | 600h |
| 6 | 1.1.4 | Draft risk management matrix | 25d | 2006-05-01 | 2006-06-02 |  | 11d |  |  | Patrick; Ram | 400h |
| 7 | 1.1.5 | Draft test plan | 25d | 2006-05-01 | 2006-06-02 |  | 11d |  |  | Patrick; Bob | 400h |
| 8 | 1.1.6 | Setup GForge | 10d | 2006-05-01 | 2006-05-12 |  | 16d | 0d |  | Patrick | 80h |
| 9 | 1.1.7 | Setup development environment | 10d | 2006-05-15 | 2006-05-26 | 8 | 16d |  |  | Patrick | 80h |
| 10 | 1.1.8 | Define initial problem scenerios | 25d | 2006-05-01 | 2006-06-02 |  | 11d |  |  | Patrick; Bob; Raj | 600h |
| 11 | 1.1.9 | Define initial use cases | 25d | 2006-05-01 | 2006-06-02 |  | 11d |  |  | Patrick; Bob; Raj | 600h |
| 12 | 1.1.10 | Define initial datasets | 25d | 2006-05-01 | 2006-06-02 |  | 11d |  |  | Patrick; Bob; Raj | 600h |
| 13 | 1.1.11 | **Setup testbed** | 11d | 2006-05-01 | 2006-05-15 |  | 25d |  |  | Jeff | 184h |
| 14 | 1.1.11.1 | Purchase testbed | 10d | 2006-05-01 | 2006-05-12 |  | 25d | 0d |  | Jeff | 80h |
| 15 | 1.1.11.2 | Add testbed to backup cycle | 1d | 2006-05-15 | 2006-05-15 | 14 | 25d |  |  | Jeff | 8h |
| 16 | 1.1.11.3 | Image testbed after basic environment is set up | 1d | 2006-05-15 | 2006-05-15 | 14 | 25d |  |  | Jeff | 8h |
| 17 | 1.2 | **Elaboration** | 47d | 2006-06-05 | 2006-08-08 | 2 | 11d | 0d |  |  | 10868h |
| 18 | 1.2.1 | **Iteration 1** | 30d | 2006-06-05 | 2006-07-14 |  | 11d |  |  |  | 5748h |
| 19 | 1.2.1.1 | **Draft use case document** | 10d | 2006-06-05 | 2006-06-16 |  | 28d | 0d |  |  | 160h |
| 20 | 1.2.1.1.1 | Define problem scenarios | 2d | 2006-06-05 | 2006-06-06 |  | 33d | 0d | finish no earlier than 2006-05-25 | Raj; Bob | 32h |
| 21 | 1.2.1.1.2 | Draft use cases | 8d | 2006-06-07 | 2006-06-16 | 20 | 33d |  | finish no earlier than 2006-06-01 | Patrick; Bob | 128h |
| 22 | 1.2.1.2 | **Draft requirements and specifications document** | 20d | 2006-06-19 | 2006-07-14 | 19 | 28d |  |  | Patrick | 440h |
| 23 | 1.2.1.2.1 | Translate use cases into requirements | 10d | 2006-06-19 | 2006-06-30 |  | 33d | 0d |  | Patrick | 80h |
| 24 | 1.2.1.2.2 | Create test traceability matrix | 5d | 2006-07-03 | 2006-07-07 | 23 | 33d |  |  | Patrick | 40h |
| 25 | 1.2.1.2.3 | Draft architecture UML diagrams | 20d | 2006-06-19 | 2006-07-14 |  | 28d |  |  | Patrick | 160h |
| 26 | 1.2.1.3 | Draft dataset document (draft) | 20d | 2006-06-05 | 2006-06-30 |  | 38d |  |  | Patrick; Bob; Mark | 480h |

| ID | WBS | Task | Duration | Start | Finish | Predecessors | Total slack | Free slack | Constraint | Resources | Work |
| --- | --- | --- | --- | --- | --- | --- | --- | --- | --- | --- | --- |
| 27 | 1.2.1.4 | **Dataset preparation** | 27d | 2006-06-05 | 2006-07-11 |  | 11d |  |  | Raj; Bob; Mark; Patrick | 1628h |
| 28 | 1.2.1.4.1 | **Dataset acquisition** | 7d | 2006-06-05 | 2006-06-13 |  | 11d | 0d |  | Raj; Bob | 184h |
| 29 | 1.2.1.4.1.1 | Determine available datasets | 1d | 2006-06-05 | 2006-06-05 |  | 11d | 0d | finish no earlier than 2006-05-25 | Raj; Bob | 16h |
| 30 | 1.2.1.4.1.2 | Match datasets to use cases | 1d | 2006-06-06 | 2006-06-06 | 29 | 11d | 0d |  | Raj; Bob | 16h |
| 31 | 1.2.1.4.1.3 | Fill out IRB forms | 5d | 2006-06-07 | 2006-06-13 | 30 | 11d |  |  | Bob | 40h |
| 32 | 1.2.1.4.2 | **MAW3** | 12.5d | 2006-06-14 | 2006-06-30 | 28 | 18.5d | 7.5d |  | Mark | 260h |
| 33 | 1.2.1.4.2.1 | Document CDE usage | 2.5d | 2006-06-14 | 2006-06-16 |  | 18.5d | 0d |  | Mark; Chris | 40h |
| 34 | 1.2.1.4.2.2 | Dataset deidentification | 5d | 2006-06-16 | 2006-06-23 | 33 | 18.5d | 0d |  | Mark; Chris | 80h |
| 35 | 1.2.1.4.2.3 | Expose database | 5d | 2006-06-23 | 2006-06-30 | 34 | 18.5d |  |  | Mark.Chris | 40h |
| 36 | 1.2.1.4.3 | **DSR** | 20d | 2006-06-14 | 2006-07-11 | 28 | 11d | 0d |  | Mark | 320h |
| 37 | 1.2.1.4.3.1 | CDE document | 5d | 2006-06-14 | 2006-06-20 |  | 11d | 0d |  | Mark | 40h |
| 38 | 1.2.1.4.3.2 | Dataset deidentification | 10d | 2006-06-21 | 2006-07-04 | 37 | 11d | 0d |  | Mark | 80h |
| 39 | 1.2.1.4.3.3 | Expose database | 5d | 2006-07-05 | 2006-07-11 | 38 | 11d |  |  | Mark | 40h |
| 40 | 1.2.1.5 | **Tool installation** | 25d | 2006-06-05 | 2006-07-07 |  | 33d |  |  | Bioinformatics; Mark | 1800h |
| 41 | 1.2.1.5.1 | **caTissue Core** | 25d | 2006-06-05 | 2006-07-07 |  | 33d |  |  | Bioinformatics; Mark | 600h |
| 42 | 1.2.1.5.1.1 | Document CDE extension | 5d | 2006-06-05 | 2006-06-09 |  | 33d | 0d |  | Mark | 40h |
| 43 | 1.2.1.5.1.2 | Extend model | 5d | 2006-06-12 | 2006-06-16 | 42 | 33d | 0d |  | Mark | 40h |
| 44 | 1.2.1.5.1.3 | Apply model to tool | 5d | 2006-06-19 | 2006-06-23 | 43 | 33d | 0d |  | Bioinformatics | 40h |
| 45 | 1.2.1.5.1.4 | Install services | 5d | 2006-06-26 | 2006-06-30 | 44 | 33d | 0d |  | Bioinformatics | 40h |
| 46 | 1.2.1.5.1.5 | Install tool | 5d | 2006-07-03 | 2006-07-07 | 45 | 33d |  |  | Bioinformatics | 40h |
| 47 | 1.2.1.5.2 | **CTOM** | 25d | 2006-06-05 | 2006-07-07 |  | 33d |  |  | Bioinformatics; Mark | 600h |
| 48 | 1.2.1.5.2.1 | Document CDE extension | 5d | 2006-06-05 | 2006-06-09 |  | 33d | 0d |  | Mark | 40h |
| 49 | 1.2.1.5.2.2 | Extend model | 5d | 2006-06-12 | 2006-06-16 | 48 | 33d | 0d |  | Mark | 40h |
| 50 | 1.2.1.5.2.3 | Apply model to tool | 5d | 2006-06-19 | 2006-06-23 | 49 | 33d | 0d |  | Bioinformatics | 40h |
| 51 | 1.2.1.5.2.4 | Install services | 5d | 2006-06-26 | 2006-06-30 | 50 | 33d | 0d |  | Bioinformatics | 40h |
| 52 | 1.2.1.5.2.5 | Install tool | 5d | 2006-07-03 | 2006-07-07 | 51 | 33d |  |  | Bioinformatics | 40h |

| ID | WBS | Task | Duration | Start | Finish | Predecessors | Total slack | Free slack | Resources | Work |
| --- | --- | --- | --- | --- | --- | --- | --- | --- | --- | --- |
| 53 | 1.2.1.5.3 | **CAE** | 25d | 2006-06-05 | 2006-07-07 |  | 33d |  |  | 200h |
| 54 | 1.2.1.5.3.1 | Document CDE extension | 5d | 2006-06-05 | 2006-06-09 |  | 33d | 0d | Mark | 40h |
| 55 | 1.2.1.5.3.2 | Extend model | 5d | 2006-06-12 | 2006-06-16 | 54 | 33d | 0d | Mark | 40h |
| 56 | 1.2.1.5.3.3 | Apply model to tool | 5d | 2006-06-19 | 2006-06-23 | 55 | 33d | 0d | Bioinformatics | 40h |
| 57 | 1.2.1.5.3.4 | Install services | 5d | 2006-06-26 | 2006-06-30 | 56 | 33d | 0d | Bioinformatics | 40h |
| 58 | 1.2.1.5.3.5 | Install tool | 5d | 2006-07-03 | 2006-07-07 | 57 | 33d |  | Bioinformatics | 40h |
| 59 | 1.2.1.6 | **System testing** | 15d | 2006-06-05 | 2006-06-23 |  | 43d |  | Patrick; Mark | 800h |
| 60 | 1.2.1.6.1 | **Setup testing environment** | 5d | 2006-06-05 | 2006-06-09 |  | 43d | 0d | Patrick | 80h |
| 61 | 1.2.1.6.1.1 | Implement setup/tear down of services | 5d | 2006-06-05 | 2006-06-09 |  | 43d |  | Patrick | 40h |
| 62 | 1.2.1.6.2 | **Domain services** | 10d | 2006-06-05 | 2006-06-16 |  | 48d |  | Patrick | 160h |
| 63 | 1.2.1.6.2.1 | Implement discovery test | 5d | 2006-06-05 | 2006-06-09 |  | 48d | 0d | Patrick | 40h |
| 64 | 1.2.1.6.2.2 | Implement performance test | 5d | 2006-06-12 | 2006-06-16 | 63 | 48d |  | Patrick | 40h |
| 65 | 1.2.1.6.3 | **Distributed query engine** | 10d | 2006-06-12 | 2006-06-23 | 60 | 43d |  | Patrick | 160h |
| 66 | 1.2.1.6.3.1 | Implement discovery test | 5d | 2006-06-12 | 2006-06-16 |  | 43d | 0d | Patrick | 40h |
| 67 | 1.2.1.6.3.2 | Implement performance test | 5d | 2006-06-19 | 2006-06-23 | 66 | 43d |  | Patrick | 40h |
| 68 | 1.2.1.6.4 | **Graphical user interface** | 5d | 2006-06-05 | 2006-06-09 |  | 53d |  | Mark; Patrick | 160h |
| 69 | 1.2.1.6.4.1 | Create draft QA test plan | 5d | 2006-06-05 | 2006-06-09 |  | 53d |  | Mark; Patrick | 80h |
| 70 | 1.2.1.7 | **Security integration** | 15d | 2006-06-05 | 2006-06-23 |  | 18d |  | Patrick; Jeff | 440h |
| 71 | 1.2.1.7.1 | Identify Duke IdP | 10d | 2006-06-05 | 2006-06-16 |  | 48d |  | Jeff | 80h |
| 72 | 1.2.1.7.2 | Integrate Dorian with Duke IdP | 15d | 2006-06-05 | 2006-06-23 |  | 18d | 0d | Patrick | 120h |
| 73 | 1.2.2 | **Iteration 2** | 32d | 2006-06-26 | 2006-08-08 | 72 | 11d |  |  | 5120h |
| 74 | 1.2.2.1 | **Final use case document** | 10d | 2006-06-26 | 2006-07-07 |  | 33d |  | Patrick | 160h |
| 75 | 1.2.2.1.1 | Finalize problem scenarios | 5d | 2006-06-26 | 2006-06-30 |  | 33d | 0d | Patrick | 40h |
| 76 | 1.2.2.1.2 | Finalize use cases | 5d | 2006-07-03 | 2006-07-07 | 75 | 33d |  | Patrick | 40h |

| ID | WBS | Task | Duration | Start | Finish | Predecessors | Total slack | Free slack | Resources | Work |
| --- | --- | --- | --- | --- | --- | --- | --- | --- | --- | --- |
| 77 | 1.2.2.2 | **Final requirements and specifications document** | 15d | 2006-06-26 | 2006-07-14 |  | 28d |  | Patrick | 240h |
| 78 | 1.2.2.2.1 | Finalize requirements | 5d | 2006-06-26 | 2006-06-30 |  | 28d | 0d | Patrick | 40h |
| 79 | 1.2.2.2.2 | Finalize traceability matrix | 5d | 2006-07-03 | 2006-07-07 | 78 | 28d | 0d | Patrick | 40h |
| 80 | 1.2.2.2.3 | Finalize UML | 5d | 2006-07-10 | 2006-07-14 | 79 | 28d |  | Patrick | 40h |
| 81 | 1.2.2.3 | Draft dataset document (final) | 10d | 2006-06-26 | 2006-07-07 |  | 33d |  | Patrick; Bob; Mark | 240h |
| 82 | 1.2.2.4 | **Dataset preparation** | 20d | 2006-07-12 | 2006-08-08 | 32, 36 | 11d |  | Mark | 800h |
| 83 | 1.2.2.4.1 | **Tumor registry** | 20d | 2006-07-12 | 2006-08-08 | 28 | 11d |  | Mark | 320h |
| 84 | 1.2.2.4.1.1 | CDE document | 5d | 2006-07-12 | 2006-07-18 |  | 11d | 0d | Mark | 40h |
| 85 | 1.2.2.4.1.2 | Dataset deidentification | 10d | 2006-07-19 | 2006-08-01 | 84 | 11d | 0d | Mark | 80h |
| 86 | 1.2.2.4.1.3 | Expose database | 5d | 2006-08-02 | 2006-08-08 | 85 | 11d |  | Mark | 40h |
| 87 | 1.2.2.4.2 | **GEMS Illumina** | 20d | 2006-07-12 | 2006-08-08 |  | 11d |  | Mark | 320h |
| 88 | 1.2.2.4.2.1 | CDE document | 5d | 2006-07-12 | 2006-07-18 |  | 11d | 0d | Mark | 40h |
| 89 | 1.2.2.4.2.2 | Dataset deidentification | 10d | 2006-07-19 | 2006-08-01 | 88 | 11d | 0d | Mark | 80h |
| 90 | 1.2.2.4.2.3 | Expose database | 5d | 2006-08-02 | 2006-08-08 | 89 | 11d |  | Mark | 40h |
| 91 | 1.2.2.5 | **Tool installation** | 25d | 2006-06-26 | 2006-07-28 |  | 18d |  | Bioinformatics; Mark | 1600h |
| 92 | 1.2.2.5.1 | **caTIES** | 25d | 2006-06-26 | 2006-07-28 |  | 18d |  | Bioinformatics; Mark | 600h |
| 93 | 1.2.2.5.1.1 | Document CDE extension | 5d | 2006-06-26 | 2006-06-30 |  | 18d | 0d | Mark | 40h |
| 94 | 1.2.2.5.1.2 | Extend model | 5d | 2006-07-03 | 2006-07-07 | 93 | 18d | 0d | Mark | 40h |
| 95 | 1.2.2.5.1.3 | Apply model to tool | 5d | 2006-07-10 | 2006-07-14 | 94 | 18d | 0d | Bioinformatics | 40h |
| 96 | 1.2.2.5.1.4 | Install services | 5d | 2006-07-17 | 2006-07-21 | 95 | 18d | 0d | Bioinformatics | 40h |
| 97 | 1.2.2.5.1.5 | Install tool | 5d | 2006-07-24 | 2006-07-28 | 96 | 18d |  | Bioinformatics | 40h |
| 98 | 1.2.2.5.2 | **caIntegrator** | 25d | 2006-06-26 | 2006-07-28 |  | 18d |  | Bioinformatics; Mark | 600h |
| 99 | 1.2.2.5.2.1 | Document CDE extension | 5d | 2006-06-26 | 2006-06-30 |  | 18d | 0d | Mark | 40h |
| 100 | 1.2.2.5.2.2 | Extend model | 5d | 2006-07-03 | 2006-07-07 | 99 | 18d | 0d | Mark | 40h |
| 101 | 1.2.2.5.2.3 | Apply model to tool | 5d | 2006-07-10 | 2006-07-14 | 100 | 18d | 0d | Bioinformatics | 40h |
| 102 | 1.2.2.5.2.4 | Install services | 5d | 2006-07-17 | 2006-07-21 | 101 | 18d | 0d | Bioinformatics | 40h |
| 103 | 1.2.2.5.2.5 | Install tool | 5d | 2006-07-24 | 2006-07-28 | 102 | 18d |  | Bioinformatics | 40h |

| ID | WBS | Task | Duration | Start | Finish | Predecessors | Total slack | Free slack | Resources | Work |
| --- | --- | --- | --- | --- | --- | --- | --- | --- | --- | --- |
| 104 | 1.2.2.6 | **Testing** | 20d | 2006-06-26 | 2006-07-21 |  | 23d |  | Patrick; Mark | 2080h |
| 105 | 1.2.2.6.1 | Draft testing report | 20d | 2006-06-26 | 2006-07-21 |  | 23d |  | Patrick; Mark | 320h |
| 106 | 1.2.2.6.2 | **Domain services** | 20d | 2006-06-26 | 2006-07-21 |  | 23d |  | Patrick; Mark | 600h |
| 107 | 1.2.2.6.2.1 | Translate use cases into queries | 10d | 2006-06-26 | 2006-07-07 |  | 33d |  | Patrick; Mark | 160h |
| 108 | 1.2.2.6.2.2 | Implement base data test | 5d | 2006-07-10 | 2006-07-14 | 111 | 28d |  | Patrick; Mark | 80h |
| 109 | 1.2.2.6.2.3 | Implement security test | 5d | 2006-07-17 | 2006-07-21 | 112 | 23d |  | Patrick | 40h |
| 110 | 1.2.2.6.3 | **Distributed query engine** | 20d | 2006-06-26 | 2006-07-21 |  | 23d |  | Patrick; Mark | 600h |
| 111 | 1.2.2.6.3.1 | Translate use cases into queries | 10d | 2006-06-26 | 2006-07-07 |  | 23d | 0d | Patrick; Mark | 160h |
| 112 | 1.2.2.6.3.2 | Implement base data test | 5d | 2006-07-10 | 2006-07-14 | 111 | 23d | 0d | Patrick; Mark | 80h |
| 113 | 1.2.2.6.3.3 | Implement security test | 5d | 2006-07-17 | 2006-07-21 | 112 | 23d |  | Patrick | 40h |
| 114 | 1.2.2.6.4 | **Graphical user interface** | 15d | 2006-06-26 | 2006-07-14 |  | 28d |  | Mark | 240h |
| 115 | 1.2.2.6.4.1 | Final QA test plan | 15d | 2006-06-26 | 2006-07-14 |  | 28d |  | Mark | 120h |
| 116 | 1.3 | **Construction** | 40d | 2006-08-09 | 2006-10-03 | 17 | 11d | 0d |  | 2880h |
| 117 | 1.3.1 | **Iteration 1** | 20d | 2006-08-09 | 2006-09-05 |  | 11d | 0d |  | 1760h |
| 118 | 1.3.1.1 | Final dataset document (draft) | 20d | 2006-08-09 | 2006-09-05 |  | 11d |  |  |  |
| 119 | 1.3.1.2 | **Dataset preparation** | 10d | 2006-08-09 | 2006-08-22 |  | 21d |  |  | 160h |
| 120 | 1.3.1.2.1 | **Construct demo datasets** | 10d | 2006-08-09 | 2006-08-22 |  | 21d |  | Mark | 160h |
| 121 | 1.3.1.2.1.1 | Construct MAW3 dataset | 5d | 2006-08-09 | 2006-08-15 |  | 21d | 0d | Mark | 40h |
| 122 | 1.3.1.2.1.2 | Construct DSR dataset | 5d | 2006-08-16 | 2006-08-22 | 121 | 21d |  | Mark | 40h |
| 123 | 1.3.1.3 | **Testing** | 20d | 2006-08-09 | 2006-09-05 |  | 11d |  | Patrick; Mark | 1600h |
| 124 | 1.3.1.3.1 | **Domain services** | 20d | 2006-08-09 | 2006-09-05 |  | 11d |  | Patrick; Mark | 520h |
| 125 | 1.3.1.3.1.1 | Implement metadata test | 5d | 2006-08-09 | 2006-08-15 |  | 26d |  | Patrick | 40h |
| 126 | 1.3.1.3.1.2 | Implement data test | 20d | 2006-08-09 | 2006-09-05 |  | 11d |  | Mark | 160h |
| 127 | 1.3.1.3.2 | **Distributed query engine** | 20d | 2006-08-09 | 2006-09-05 |  | 11d |  | Patrick; Mark | 520h |
| 128 | 1.3.1.3.2.1 | Implement metadata test | 5d | 2006-08-09 | 2006-08-15 |  | 26d |  | Patrick | 40h |
| 129 | 1.3.1.3.2.2 | Implement data test | 20d | 2006-08-09 | 2006-09-05 |  | 11d |  | Mark | 160h |

| ID | WBS | Task | Duration | Start | Finish | Predecessors | Total slack | Free slack | Constraint | Resources | Work |
| --- | --- | --- | --- | --- | --- | --- | --- | --- | --- | --- | --- |
| 130 | 1.3.1.3.3 | **Graphical user interface** | 7.5d | 2006-08-09 | 2006-08-18 |  | 23.5d |  |  | Mark; domain expert | 240h |
| 131 | 1.3.1.3.3.1 | Perform QA tests | 7.5d | 2006-08-09 | 2006-08-18 |  | 23.5d |  |  | Mark; domain expert | 120h |
| 132 | 1.3.2 | **Iteration 2** | 20d | 2006-09-06 | 2006-10-03 | 117 | 11d |  |  |  | 1120h |
| 133 | 1.3.2.1 | Final dataset document (final) | 15d | 2006-09-06 | 2006-09-26 |  | 16d |  |  |  |  |
| 134 | 1.3.2.2 | **Dataset preparation** | 10d | 2006-09-06 | 2006-09-19 |  | 21d |  |  |  | 160h |
| 135 | 1.3.2.2.1 | **Construct demo datasets** | 10d | 2006-09-06 | 2006-09-19 |  | 21d |  |  | Mark | 160h |
| 136 | 1.3.2.2.1.1 | Construct tumor registry dataset | 5d | 2006-09-06 | 2006-09-12 |  | 21d | 0d |  | Mark | 40h |
| 137 | 1.3.2.2.1.2 | Construct GEMS Illumina dataset | 5d | 2006-09-13 | 2006-09-19 | 136 | 21d |  |  | Mark | 40h |
| 138 | 1.3.2.3 | **Testing** | 20d | 2006-09-06 | 2006-10-03 |  | 11d |  |  |  | 960h |
| 139 | 1.3.2.3.1 | **Domain services** | 20d | 2006-09-06 | 2006-10-03 |  | 11d |  |  | Mark | 320h |
| 140 | 1.3.2.3.1.1 | Final testing report | 20d | 2006-09-06 | 2006-10-03 |  | 11d |  |  | Mark | 160h |
| 141 | 1.3.2.3.2 | **Distributed query engine** | 20d | 2006-09-06 | 2006-10-03 |  | 11d |  |  | Mark | 320h |
| 142 | 1.3.2.3.2.1 | Final testing report | 20d | 2006-09-06 | 2006-10-03 |  | 11d |  |  | Mark | 160h |
| 143 | 1.3.2.3.3 | **Graphical user interface** | 20d | 2006-09-06 | 2006-10-03 |  | 11d |  |  | Mark | 320h |
| 144 | 1.3.2.3.3.1 | Final testing report | 20d | 2006-09-06 | 2006-10-03 |  | 11d |  |  | Mark | 160h |
| 145 | 1.4 | **Transition** | 10d | 2006-10-04 | 2006-10-17 | 116 | 11d |  |  |  |  |
| 146 | 1.4.1 | Final testing | 10d | 2006-10-04 | 2006-10-17 |  | 11d |  |  |  |  |
| 147 | 1.4.2 | Final documentation | 10d | 2006-10-04 | 2006-10-17 |  | 11d |  |  |  |  |
| 148 | 1.5 | **Meetings** | 107d | 2006-05-01 | 2006-09-26 |  | 26d |  |  |  | 56h |
| 149 | 1.5.1 | Project kickoff | 1d | 2006-05-01 | 2006-05-01 |  | 131d | 0d |  | Jamie; Bob; Patrick | 24h |
| 150 | 1.5.2 | First F2F | 2d | 2006-05-24 | 2006-05-25 |  | 114d |  | finish no earlier than 2006-05-25 | Everyone | 16h |
| 151 | 1.5.3 | Second F2F | 2d | 2006-09-25 | 2006-09-26 |  | 26d |  | start no earlier than 2006-09-25 | Everyone | 16h |
| 152 | 1.6 | **Deliverables** | 132d | 2006-05-02 | 2006-11-01 | 149 | 0d |  |  |  | 160h |
| 153 | 1.6.1 | Submit project management plan | 1d | 2006-06-01 | 2006-06-01 |  | 109d |  | start no earlier than 2006-06-01 | Patrick | 8h |
| 154 | 1.6.2 | Submit communications plan | 1d | 2006-06-01 | 2006-06-01 |  | 109d |  | start no earlier than 2006-06-01 | Patrick | 8h |
| 155 | 1.6.3 | Submit risk management matrix | 1d | 2006-06-01 | 2006-06-01 |  | 109d |  | start no earlier than 2006-06-01 | Patrick | 8h |
| 156 | 1.6.4 | Submit draft use case document | 1d | 2006-07-03 | 2006-07-03 |  | 87d |  | start no earlier than 2006-07-03 | Patrick | 8h |
| 157 | 1.6.5 | Submit final use case document | 1d | 2006-08-01 | 2006-08-01 |  | 66d |  | start no earlier than 2006-08-01 | Patrick | 8h |
| 158 | 1.6.6 | Submit draft requirements and specifications document | 1d | 2006-06-01 | 2006-06-01 |  | 109d |  | start no earlier than 2006-06-01 | Patrick | 8h |
| 159 | 1.6.7 | Submit final requirements and specifications document | 1d | 2006-07-03 | 2006-07-03 |  | 87d |  | start no earlier than 2006-07-03 | Patrick | 8h |
| 160 | 1.6.8 | Submit draft UML model | 1d | 2006-08-01 | 2006-08-01 |  | 66d |  | start no earlier than 2006-08-01 | Patrick | 8h |
| 161 | 1.6.9 | Submit draft API | 1d | 2006-11-01 | 2006-11-01 |  | 0d |  | start no earlier than 2006-11-01 | Patrick | 8h |
| 162 | 1.6.10 | Submit XMI file | 1d | 2006-10-02 | 2006-10-02 |  | 22d |  | start no earlier than 2006-10-02 | Patrick | 8h |
| 163 | 1.6.11 | Submit CDE use report | 1d | 2006-11-01 | 2006-11-01 |  | 0d |  | start no earlier than 2006-11-01 | Patrick | 8h |
| 164 | 1.6.12 | Submit draft test approach | 1d | 2006-06-01 | 2006-06-01 |  | 109d |  | start no earlier than 2006-06-01 | Patrick | 8h |
| 165 | 1.6.13 | Submit final test approach | 1d | 2006-07-03 | 2006-07-03 |  | 87d |  | start no earlier than 2006-07-03 | Patrick | 8h |
| 166 | 1.6.14 | Submit draft datasets | 1d | 2006-08-01 | 2006-08-01 |  | 66d |  | start no earlier than 2006-08-01 | Patrick | 8h |
| 167 | 1.6.15 | Submit final datasets | 1d | 2006-11-01 | 2006-11-01 |  | 0d |  | start no earlier than 2006-11-01 | Patrick | 8h |
| 168 | 1.6.16 | Submit draft prototype code | 1d | 2006-08-01 | 2006-08-01 |  | 66d |  | start no earlier than 2006-08-01 | Patrick | 8h |
| 169 | 1.6.17 | Submit final prototype code | 1d | 2006-11-01 | 2006-11-01 |  | 0d |  | start no earlier than 2006-11-01 | Patrick | 8h |
| 170 | 1.6.18 | Submit testing report for draft prototype | 1d | 2006-08-01 | 2006-08-01 |  | 66d |  | start no earlier than 2006-08-01 | Patrick | 8h |
| 171 | 1.6.19 | Submit testing report for final prototype | 1d | 2006-11-01 | 2006-11-01 |  | 0d |  | start no earlier than 2006-11-01 | Patrick | 8h |
| 172 | 1.6.20 | Submit technical/architectural guide | 1d | 2006-05-02 | 2006-05-02 |  | 131d |  |  | Patrick | 8h |

| ID | WBS | Task | Duration | Start | Finish | Total slack |
| --- | --- | --- | --- | --- | --- | --- |
| 173 | 2 | **Phase II** | 1d? | 2006-05-01 | 2006-05-01 | 132d |
| 174 | 2.1 | Management | 1d? | 2006-05-01 | 2006-05-01 | 132d |
| 175 | 2.2 | Use case definition | 1d? | 2006-05-01 | 2006-05-01 | 132d |
| 176 | 2.3 | Dataset migration | 1d? | 2006-05-01 | 2006-05-01 | 132d |
| 177 | 2.4 | Tool installation | 1d? | 2006-05-01 | 2006-05-01 | 132d |
| 178 | 2.5 | Testing | 1d? | 2006-05-01 | 2006-05-01 | 132d |
